# Osvětlení garáží 2021

Schedule from GanttProject, 2021-03-04 to 2021-10-04.

## Calendars

- Project calendar: Mon-Fri working; Sat-Sun off.

## Schedule

| ID | WBS | Task | Duration | Start | Finish |
| --- | --- | --- | --- | --- | --- |
| 1 | 1 | **Projekce elektroinstalace a zařízení** | 149d | 2021-03-04 | 2021-09-28 |
| 2 | 1.1 | **Zjištění aktuálního stavu** | 29d | 2021-03-04 | 2021-04-13 |
| 3 | 1.1.1 | **Zajištění stávající dokumentace** | 29d | 2021-03-04 | 2021-04-13 |
| 4 | 1.1.1.1 | Požádání zákazníka o dokumentaci | 7d | 2021-03-04 | 2021-03-12 |
| 5 | 1.1.1.2 | Kontrola shodnosti dokumentace a skutečného provedení/stavu | 11d | 2021-03-12 | 2021-03-26 |
| 6 | 1.1.1.3 | Vložení stávající dokumentace do GTWD | 2d | 2021-04-12 | 2021-04-13 |
| 7 | 1.2 | **Procházení prostoru** | 11d | 2021-03-12 | 2021-03-26 |
| 8 | 1.2.1 | Kontrola rozměrů svítidel | 4d | 2021-03-12 | 2021-03-17 |
| 9 | 1.2.2 | Kontrola průchodnosti kabelových průchodů | 1d | 2021-03-18 | 2021-03-18 |
| 10 | 1.2.3 | Zjištění stávajícího stavu rozvaděčů | 2d | 2021-03-19 | 2021-03-22 |
| 11 | 1.2.4 | Zjištění velikosti odstavných ploch na materiál | 2d | 2021-03-23 | 2021-03-24 |
| 12 | 1.2.5 | Vložení informace o stávajícím stavu do GTWD | 2d | 2021-03-25 | 2021-03-26 |
| 13 | 1.3 | **Projekce osvětlení** | 133d | 2021-03-26 | 2021-09-28 |
| 14 | 1.3.1 | Vytvoření modelu prostoru | 5d | 2021-03-26 | 2021-04-01 |
| 15 | 1.3.2 | Výpočet hodnoty osvětlenosti | 4d | 2021-04-02 | 2021-04-07 |
| 16 | 1.3.3 | Ověření výpočtu simulací | 2d | 2021-04-07 | 2021-04-08 |
| 17 | 1.3.4 | Vložení výsledku a dokumentace o výpočtu osvětlení do GTWD | 2d | 2021-04-08 | 2021-04-09 |
| 18 | 1.3.5 | **Návrh svítidel** | 18d | 2021-04-12 | 2021-05-05 |
| 19 | 1.3.5.1 | Výběr svítidel z katalogu | 2d | 2021-04-12 | 2021-04-13 |
| 20 | 1.3.5.2 | Kontrola dostupnosti vybraných svítidel | 2d | 2021-04-13 | 2021-04-14 |
| 21 | 1.3.5.3 | Vložení návrhu vybraných svítidel do GTWD | 1d | 2021-04-14 | 2021-04-14 |
| 22 | 1.3.5.4 | Komunikace se zákazníkem ohledně vybraného designu svítidel vložených do GTWD | 1d | 2021-04-14 | 2021-04-14 |
| 23 | 1.3.5.5 | Dodatečná kontrola/úprava vybraných svítidel | 15d | 2021-04-15 | 2021-05-05 |
| 24 | 1.3.5.6 | Vytvoření objednávky na svítidla | 1d | 2021-04-15 | 2021-04-15 |
| 25 | 1.3.5.7 | Vložení dokumentů do GTWD | 1d | 2021-04-16 | 2021-04-16 |

| ID | WBS | Task | Duration | Start | Finish |
| --- | --- | --- | --- | --- | --- |
| 26 | 1.3.6 | **Projekce elektroinstalace** | 13d | 2021-04-19 | 2021-05-05 |
| 27 | 1.3.6.1 | **Výpočet zatížení a příkonu** | 2d | 2021-04-19 | 2021-04-20 |
| 28 | 1.3.6.1.1 | Vlastní výpočet | 2d | 2021-04-19 | 2021-04-20 |
| 29 | 1.3.6.1.2 | Vložení výsledku do GTWD | 1d | 2021-04-20 | 2021-04-20 |
| 30 | 1.3.6.2 | **Navržení rozvodu kabeláže dle stávající dokumentace** | 6d | 2021-04-21 | 2021-04-28 |
| 31 | 1.3.6.2.1 | Vlastní návrh | 3d | 2021-04-21 | 2021-04-23 |
| 32 | 1.3.6.2.2 | Objednávka komponent | 1d | 2021-04-27 | 2021-04-27 |
| 33 | 1.3.6.2.3 | Vložení výsledku do GTWD | 1d | 2021-04-28 | 2021-04-28 |
| 34 | 1.3.6.3 | **Vytvoření návrhu a projekce moderních rozvaděčů** | 9d | 2021-04-23 | 2021-05-05 |
| 35 | 1.3.6.3.1 | Kontrola dostupnosti navržených komponent | 1d | 2021-04-23 | 2021-04-23 |
| 36 | 1.3.6.3.2 | Vložení navržených komponent do GTWD | 1d | 2021-04-23 | 2021-04-23 |
| 37 | 1.3.6.3.3 | Konzultace návrhu s klientem | 1d | 2021-04-26 | 2021-04-26 |
| 38 | 1.3.6.3.4 | Objednávka komponent | 7d | 2021-04-27 | 2021-05-05 |
| 39 | 1.3.6.4 | **Kontrola výkonu a ochranných prvků v rozvaděčích** | 2d | 2021-04-26 | 2021-04-27 |
| 40 | 1.3.6.4.1 | Konzultace výsledků s klientem | 1d | 2021-04-26 | 2021-04-26 |
| 41 | 1.3.6.4.2 | Vlastní kontrola | 1d | 2021-04-27 | 2021-04-27 |
| 42 | 1.3.7 | **Vytvoření dokumentace** | 60d | 2021-07-07 | 2021-09-28 |
| 43 | 1.3.7.1 | Kontrola přítomnosti všech součástí z předchozích kroků v administraci | 4d | 2021-07-07 | 2021-07-12 |
| 44 | 1.3.7.2 | Kompletace dokumentace z části přípravy v GTWD | 5d | 2021-07-09 | 2021-07-15 |
| 45 | 1.3.7.3 | Kompletace dokumentace skutečného provedení v GTWD | 13d | 2021-09-01 | 2021-09-17 |
| 46 | 1.3.7.4 | Vytisknutí celkové dokumentace | 2d | 2021-09-20 | 2021-09-21 |
| 47 | 1.3.7.5 | **Předání dokumentace** | 3d | 2021-09-24 | 2021-09-28 |
| 48 | 1.3.7.5.1 | Zákazníkovi | 3d | 2021-09-24 | 2021-09-28 |
| 49 | 1.3.7.5.2 | Do archivu | 2d | 2021-09-24 | 2021-09-27 |
| 50 | 1.3.7.5.3 | Na zabezpečený server | 1d | 2021-09-24 | 2021-09-24 |

| ID | WBS | Task | Duration | Start | Finish |
| --- | --- | --- | --- | --- | --- |
| 51 | 2 | **Legislativní úkony** | 152d | 2021-03-04 | 2021-10-01 |
| 52 | 2.1 | **Smlouva** | 13d | 2021-03-04 | 2021-03-22 |
| 53 | 2.1.1 | Tvorba smlouvy | 12d | 2021-03-04 | 2021-03-19 |
| 54 | 2.1.2 | Podepsání smlouvy | 2d | 2021-03-19 | 2021-03-22 |
| 55 | 2.2 | **Žádost o dotace** | 95d | 2021-03-04 | 2021-07-14 |
| 56 | 2.2.1 | Vypsání žádosti | 4d | 2021-03-04 | 2021-03-09 |
| 57 | 2.2.2 | Přijmutí peněz z fondu klientem | 1d | 2021-03-04 | 2021-03-04 |
| 58 | 2.2.3 | Vložení potvrzení o dotacích k dokumentaci do GTWD | 1d | 2021-03-04 | 2021-03-04 |
| 59 | 2.2.4 | Doručení příslušnému orgánu | 1d | 2021-03-10 | 2021-03-10 |
| 60 | 2.2.5 | Dodání plné žádosti | 90d | 2021-03-11 | 2021-07-14 |
| 61 | 2.3 | **Revize** | 23d | 2021-08-13 | 2021-09-14 |
| 62 | 2.3.1 | Uvědomění technika z divize revize | 1d | 2021-08-13 | 2021-08-13 |
| 63 | 2.3.2 | Udělení přístupu do GTWD | 1d | 2021-08-16 | 2021-08-16 |
| 64 | 2.3.3 | Kontrola skutečného provedení revizním technikem | 5d | 2021-08-30 | 2021-09-03 |
| 65 | 2.3.4 | Vytvoření zprávy revizního technika | 5d | 2021-09-06 | 2021-09-10 |
| 66 | 2.3.5 | Prostor na vyřešení připomínek revizního technika | 3d | 2021-09-10 | 2021-09-14 |
| 67 | 2.3.6 | Vložení revizní zprávy do celkové dokumentace GTWD | 1d | 2021-09-13 | 2021-09-13 |
| 68 | 2.4 | **Uvedení do provozu** | 26d | 2021-08-27 | 2021-10-01 |
| 69 | 2.4.1 | Provedení klienta | 1d | 2021-08-27 | 2021-08-27 |
| 70 | 2.4.2 | Zaškolování obsluhy | 5d | 2021-09-06 | 2021-09-10 |
| 71 | 2.4.3 | Zkušební provoz | 12d | 2021-09-10 | 2021-09-27 |
| 72 | 2.4.4 | Vytvoření předávacího protokolu | 2d | 2021-09-13 | 2021-09-14 |
| 73 | 2.4.5 | Schválení protokolu klientem | 5d | 2021-09-20 | 2021-09-24 |
| 74 | 2.4.6 | Tisk protokolu | 1d | 2021-09-27 | 2021-09-27 |
| 75 | 2.4.7 | Podpis protokolu oběma smluvními stranami | 2d | 2021-09-27 | 2021-09-28 |
| 76 | 2.4.8 | Vložení oskenované kopie protokolu do GTWD | 1d | 2021-10-01 | 2021-10-01 |

| ID | WBS | Task | Duration | Start | Finish |
| --- | --- | --- | --- | --- | --- |
| 77 | 3 | **Kontrola průběhu projektu** | 121d | 2021-04-19 | 2021-10-04 |
| 78 | 3.1 | Založení projektu v GetThatWorkDone | 1d | 2021-04-19 | 2021-04-19 |
| 79 | 3.2 | Pozvání zákazníka do projektu | 2d | 2021-04-19 | 2021-04-20 |
| 80 | 3.3 | Zaslání instruktážního videa GetThatWorkDone | 1d | 2021-04-19 | 2021-04-19 |
| 81 | 3.4 | Uzavření projektu v GTWD | 1d | 2021-10-04 | 2021-10-04 |
| 82 | 3.5 | Archivace projektu v GTWD | 1d | 2021-10-04 | 2021-10-04 |
| 83 | 3.6 | Zaslání archivačního odkazu do GTWD zákazníkovi | 1d | 2021-10-04 | 2021-10-04 |
| 84 | 3.7 | Vyřazení projektu z aktivních projektů v GTWD | 1d | 2021-10-04 | 2021-10-04 |
| 85 | 4 | **Likvidace materiálu** | 63d | 2021-04-20 | 2021-07-15 |
| 86 | 4.1 | Zajištění kontejneru na odpad | 1d | 2021-04-20 | 2021-04-20 |
| 87 | 4.2 | Přívoz kontejneru na materiál určený k likvidaci | 1d | 2021-05-11 | 2021-05-11 |
| 88 | 4.3 | Zajištění náhradního prázdného kontejneru | 1d | 2021-05-20 | 2021-05-20 |
| 89 | 4.4 | Přívoz prázdného kontejneru 1. patro | 1d | 2021-06-01 | 2021-06-01 |
| 90 | 4.5 | Zajištění odvozu kontejneru plného 1. patro | 1d | 2021-06-01 | 2021-06-01 |
| 91 | 4.6 | Odvoz plného kontejneru 1. patro | 1d | 2021-06-24 | 2021-06-24 |
| 92 | 4.7 | Přívoz prázdného kontejneru 2. patro | 1d | 2021-06-24 | 2021-06-24 |
| 93 | 4.8 | Odvoz plného kontejneru 2. patro | 1d | 2021-07-15 | 2021-07-15 |
| 94 | 5 | **Výměna osvětlení** | 89d | 2021-04-26 | 2021-08-26 |
| 95 | 5.1 | Ustanovení pracovních týmů | 3d | 2021-04-26 | 2021-04-28 |
| 96 | 5.2 | Rozdělení rolí v týmu | 1d | 2021-04-28 | 2021-04-28 |
| 97 | 5.3 | Vytvoření harmonogramu prací | 3d | 2021-04-29 | 2021-05-03 |
| 98 | 5.4 | **Odvoz materiálu na místo určení v garážích** | 6d | 2021-05-03 | 2021-05-10 |
| 99 | 5.4.1 | Kontaktování zákazníka o datu příjezdu | 1d | 2021-05-03 | 2021-05-03 |
| 100 | 5.4.2 | Čas potřebný na přesun automobilů z dotčeného patra | 6d | 2021-05-03 | 2021-05-10 |
| 101 | 5.4.3 | Umístění materiálu na odstavné plochy | 1d | 2021-05-10 | 2021-05-10 |

| ID | WBS | Task | Duration | Start | Finish |
| --- | --- | --- | --- | --- | --- |
| 102 | 5.5 | **Získání materiálu ze skladu** | 1d | 2021-05-05 | 2021-05-05 |
| 103 | 5.5.1 | Vyzvednutí firemního automobilu | 1d | 2021-05-05 | 2021-05-05 |
| 104 | 5.5.2 | Příjem ve skladu | 1d | 2021-05-05 | 2021-05-05 |
| 105 | 5.6 | **Odvoz části materiálu do skladu HnaZak** | 3d | 2021-05-05 | 2021-05-07 |
| 106 | 5.6.1 | Příjem ve skladu | 1d | 2021-05-05 | 2021-05-05 |
| 107 | 5.6.2 | Zapsání objemu materiálu do GTWD | 1d | 2021-05-07 | 2021-05-07 |
| 108 | 5.7 | **Demontáž stávajícího osvětlení** | 62d | 2021-05-26 | 2021-08-19 |
| 109 | 5.7.1 | Převzetí vysokozdvižného automobilu | 1d | 2021-08-19 | 2021-08-19 |
| 110 | 5.7.2 | Vlastní demontáž | 59d | 2021-05-26 | 2021-08-16 |
| 111 | 5.7.3 | Umístění svítidel do kontejneru na odvoz do odběrného místa | 59d | 2021-05-26 | 2021-08-16 |
| 112 | 5.8 | Montáž nového osvětlení | 58d | 2021-05-31 | 2021-08-18 |
| 113 | 5.9 | Průběžný výkaz namontovaných svítidel | 58d | 2021-05-31 | 2021-08-18 |
| 114 | 5.10 | Kontrola montážních prací | 9d | 2021-08-16 | 2021-08-26 |
| 115 | 6 | **Výměna elektro a kabeláže** | 6d | 2021-04-26 | 2021-05-03 |
| 116 | 6.1 | Ustanovení pracovních týmů | 3d | 2021-04-26 | 2021-04-28 |
| 117 | 6.2 | Rozdělení rolí v týmu | 1d | 2021-04-28 | 2021-04-28 |
| 118 | 6.3 | Vytvoření harmonogramu prací | 3d | 2021-04-29 | 2021-05-03 |
| 119 | 7 | **Odvoz materiálu na místo určení v garážích** | 6d | 2021-05-03 | 2021-05-10 |
| 120 | 7.1 | Čas potřebný na přesun automobilů z dotčeného patra | 6d | 2021-05-03 | 2021-05-10 |
| 121 | 7.2 | Kontaktování zákazníka o datu příjezdu | 1d | 2021-05-06 | 2021-05-06 |
| 122 | 7.3 | Umístění materiálu na odstavné plochy | 1d | 2021-05-10 | 2021-05-10 |
| 123 | 8 | **Získání materiálu ze skladu** | 1d | 2021-05-05 | 2021-05-05 |
| 124 | 8.1 | Vyzvednutí firemního automobilu | 1d | 2021-05-05 | 2021-05-05 |
| 125 | 8.2 | Příjem ve skladu | 1d | 2021-05-05 | 2021-05-05 |

| ID | WBS | Task | Duration | Start | Finish |
| --- | --- | --- | --- | --- | --- |
| 126 | 9 | **Odvoz části materiálu do skladu HnaZak** | 3d | 2021-05-05 | 2021-05-07 |
| 127 | 9.1 | Příjem ve skladu | 1d | 2021-05-05 | 2021-05-05 |
| 128 | 9.2 | Zapsání objemu materiálu do GTWD | 1d | 2021-05-07 | 2021-05-07 |
| 129 | 10 | Demontáž stávající kabeláže | 33d | 2021-05-10 | 2021-06-23 |
| 130 | 11 | Instalace nové kabeláže | 58d | 2021-05-10 | 2021-07-28 |
| 131 | 12 | Demontáž stávajících rozvaděčů | 7d | 2021-06-22 | 2021-06-30 |
| 132 | 13 | Prostor na dodělávky dle přání zákazníka | 10d | 2021-07-13 | 2021-07-26 |
| 133 | 14 | Kompletace rozvaděčů | 8d | 2021-07-23 | 2021-08-03 |
| 134 | 15 | Spojení rozvaděčů a kabeláže a světel | 6d | 2021-08-03 | 2021-08-10 |
| 135 | 16 | Kontrola montážních prací | 9d | 2021-08-09 | 2021-08-19 |
